| id | wbs | name | category | areaId | floor | baselineStart | baselineEnd | start | end | workers | progress | status | summary | companyId | outdoor | dependsOn | note | canAdvance |
| --- | --- | --- | --- | --- | --- | --- | --- | --- | --- | --- | --- | --- | --- | --- | --- | --- | --- | --- |
| sch-001 | 1 | 仮設・外部 | 仮設 | area-ext | 外部 | 2026-10-19 | 2026-12-11 | 2026-10-19 | 2026-12-11 | 0 | 62 | in_progress | True |  |  |  |  |  |
| sch-002 | 1.1.1 | 南面 外部足場 盛替え | 仮設 | area-ext | 外部 南面 | 2026-10-26 | 2026-10-30 | 2026-10-26 | 2026-10-30 | 4 | 100 | done |  | c-tobi | True |  |  |  |
| sch-077 | 1.1.5 | 東面 外部足場 点検・養生ネット補修 | 仮設 | area-ext | 外部 東面 | 2026-11-02 | 2026-11-11 | 2026-11-02 | 2026-11-11 | 4 | 95 | in_progress |  | c-tobi | True | sch-002 |  |  |
| sch-003 | 1.1.2 | 東面 足場盛替え | 仮設 | area-ext | 外部 東面 | 2026-11-12 | 2026-11-13 | 2026-11-12 | 2026-11-13 | 4 | 0 | not_started |  | c-tobi | True | sch-002 |  |  |
| sch-004 | 1.1.3 | 東面 外部足場 一部解体 | 仮設 | area-ext | 外部 東面 | 2026-11-20 | 2026-11-27 | 2026-11-20 | 2026-11-27 | 5 | 0 | not_started |  | c-tobi | True | sch-003, sch-040 |  |  |
| sch-005 | 1.1.4 | 南面・西面 外部足場 解体 | 仮設 | area-ext | 外部 南・西面 | 2026-11-30 | 2026-12-11 | 2026-11-30 | 2026-12-11 | 5 | 0 | not_started |  | c-tobi | True | sch-004 |  |  |
| sch-006 | 1.2.1 | 1工区 外壁シーリング | 外装 | area-ext | 外部 1〜4F | 2026-10-19 | 2026-10-30 | 2026-10-19 | 2026-10-30 | 3 | 100 | done |  | c-tosou | True |  |  |  |
| sch-007 | 1.2.2 | 屋上 パラペット笠木 取付 | 外装 | area-ext | 屋上外周 | 2026-10-26 | 2026-11-04 | 2026-10-26 | 2026-11-04 | 3 | 100 | done |  | c-sash | True |  |  |  |
| sch-008 | 2 | 1工区（B1F〜4F） 仕上・設備 | 内装 | area-1 | B1F〜4F | 2026-09-14 | 2026-12-04 | 2026-09-14 | 2026-12-04 | 0 | 79 | in_progress | True |  |  |  |  |  |
| sch-009 | 2.1.1 | 2-4F 事務室 LGS下地・ボード張り | 内装 | area-1 | 2-4F | 2026-09-14 | 2026-10-30 | 2026-09-14 | 2026-10-30 | 6 | 100 | done |  | c-naiso |  |  |  |  |
| sch-010 | 2.1.2 | 1F エントランス LGS下地・ボード張り | 内装 | area-1 | 1F | 2026-10-19 | 2026-11-06 | 2026-10-19 | 2026-11-06 | 5 | 100 | done |  | c-naiso |  |  |  |  |
| sch-011 | 2.1.3 | 3F 会議室 天井内 空調ダクト盛替え | 空調 | area-1 | 3F | 2026-11-16 | 2026-11-17 | 2026-11-16 | 2026-11-17 | 2 | 0 | not_started |  | c-kucho |  | sch-009 | CH2600 反映の施工図待ち |  |
| sch-012 | 2.1.4 | 3F 会議室 天井下地 組直し（CH2600） | 内装 | area-1 | 3F | 2026-11-17 | 2026-11-20 | 2026-11-17 | 2026-11-20 | 4 | 0 | not_started |  | c-naiso |  | sch-011 |  |  |
| sch-013 | 2.1.5 | 3F 会議室 天井ボード張り | 内装 | area-1 | 3F | 2026-11-23 | 2026-11-26 | 2026-11-23 | 2026-11-26 | 4 | 0 | not_started |  | c-naiso |  | sch-012 |  |  |
| sch-014 | 2.1.6 | 3F 会議室 タイルカーペット・クロス | 内装 | area-1 | 3F | 2026-12-01 | 2026-12-04 | 2026-12-01 | 2026-12-04 | 3 | 0 | not_started |  | c-floor |  | sch-013 |  |  |
| sch-015 | 2.2.1 | 1工区 2F 共用廊下 塗装 中塗り | 内装 | area-1 | 2F | 2026-11-04 | 2026-11-10 | 2026-11-04 | 2026-11-10 | 3 | 100 | done |  | c-tosou |  | sch-009 |  |  |
| sch-016 | 2.2.2 | 1F エントランス 塗装下地処理 | 内装 | area-1 | 1F | 2026-11-17 | 2026-11-19 | 2026-11-17 | 2026-11-19 | 3 | 0 | not_started |  | c-tosou |  | sch-010 |  | True |
| sch-017 | 2.2.3 | 1工区 共用廊下 塗装 上塗り | 内装 | area-1 | 2-4F | 2026-11-24 | 2026-11-26 | 2026-11-24 | 2026-11-26 | 3 | 0 | not_started |  | c-tosou |  | sch-015, sch-025 |  |  |
| sch-018 | 2.2.4 | 2-4F 事務室 タイルカーペット | 内装 | area-1 | 2-4F | 2026-11-27 | 2026-12-04 | 2026-11-27 | 2026-12-04 | 4 | 0 | not_started |  | c-floor |  | sch-017 |  |  |
| sch-079 | 2.2.5 | 4F 共用部 長尺シート張り | 内装 | area-1 | 4F | 2026-11-04 | 2026-11-10 | 2026-11-04 | 2026-11-10 | 3 | 100 | done |  | c-floor |  | sch-009 |  |  |
| sch-078 | 2.3.0 | 2-3F 給水・排水管 配管 | 衛生 | area-1 | 2-3F | 2026-10-19 | 2026-11-09 | 2026-10-19 | 2026-11-09 | 3 | 100 | done |  | c-eisei |  |  |  |  |
| sch-019 | 2.3.1 | B1F 排水槽・排水ポンプ 据付 | 衛生 | area-1 | B1F | 2026-10-13 | 2026-11-06 | 2026-10-13 | 2026-11-06 | 3 | 100 | done |  | c-eisei |  |  |  |  |
| sch-020 | 2.3.2 | 2-3F 給水管 耐圧試験・保温 | 衛生 | area-1 | 2-3F | 2026-11-10 | 2026-11-13 | 2026-11-10 | 2026-11-13 | 3 | 40 | in_progress |  | c-eisei |  | sch-009, sch-078 |  |  |
| sch-021 | 2.3.3 | 2-4F 衛生器具 取付 | 衛生 | area-1 | 2-4F | 2026-11-24 | 2026-12-02 | 2026-11-24 | 2026-12-02 | 3 | 0 | not_started |  | c-eisei |  | sch-020 |  |  |
| sch-022 | 2.4.1 | 1F 電気室 受変電設備 据付 | 電気 | area-1 | 1F | 2026-09-28 | 2026-10-30 | 2026-09-28 | 2026-10-30 | 4 | 100 | done |  | c-denki |  |  |  |  |
| sch-023 | 2.4.2 | B1F 駐車場 照明配管・配線 | 電気 | area-1 | B1F | 2026-10-19 | 2026-11-05 | 2026-10-19 | 2026-11-05 | 3 | 100 | done |  | c-denki |  |  |  |  |
| sch-024 | 2.4.3 | 受変電設備 切替（全館停電 8:00〜12:00） | 電気 | area-1 | 1F | 2026-11-15 | 2026-11-15 | 2026-11-15 | 2026-11-15 | 6 | 0 | not_started |  | c-denki |  | sch-022, sch-042 |  |  |
| sch-025 | 2.4.4 | 2-4F 照明器具・コンセント 取付 | 電気 | area-1 | 2-4F | 2026-11-16 | 2026-11-21 | 2026-11-16 | 2026-11-21 | 4 | 0 | not_started |  | c-denki |  | sch-024 |  |  |
| sch-026 | 2.5.1 | 1工区 消火栓・スプリンクラー配管 | 防災 | area-1 | B1F〜4F | 2026-10-05 | 2026-11-06 | 2026-10-05 | 2026-11-06 | 3 | 100 | done |  | c-shobo |  |  |  |  |
| sch-027 | 2.5.2 | 1工区 自火報 感知器 取付 | 防災 | area-1 | B1F〜4F | 2026-11-24 | 2026-11-30 | 2026-11-24 | 2026-11-30 | 3 | 0 | not_started |  | c-shobo |  | sch-025 |  |  |
| sch-028 | 2.6.1 | B1F ピット清掃・資材整理 | 仮設 | area-1 | B1F | 2026-11-18 | 2026-11-18 | 2026-11-18 | 2026-11-18 | 4 | 0 | not_started |  | c-tobi |  | sch-019 |  | True |
| sch-029 | 2.6.2 | B1F 駐車場 床面下地清掃・墨出し | 外構 | area-1 | B1F | 2026-11-19 | 2026-11-20 | 2026-11-19 | 2026-11-20 | 3 | 0 | not_started |  | c-gaiko |  | sch-023 |  | True |
| sch-030 | 3 | 2工区（5F〜8F） 仕上・設備 | 内装 | area-2 | 5F〜8F | 2026-09-28 | 2026-12-11 | 2026-09-28 | 2026-12-11 | 0 | 70 | in_progress | True |  |  |  |  |  |
| sch-031 | 3.1.1 | 5F 天井ボード張り | 内装 | area-2 | 5F | 2026-10-26 | 2026-11-10 | 2026-10-26 | 2026-11-10 | 5 | 100 | done |  | c-naiso |  |  |  |  |
| sch-032 | 3.1.2 | 6F 内装 LGS下地・ボード張り | 内装 | area-2 | 6F | 2026-11-02 | 2026-11-13 | 2026-11-02 | 2026-11-18 | 6 | 55 | delayed |  | c-naiso |  | sch-031 |  |  |
| sch-033 | 3.1.3 | 7F 内装 LGS下地・ボード張り | 内装 | area-2 | 7F | 2026-11-19 | 2026-12-02 | 2026-11-19 | 2026-12-02 | 6 | 0 | not_started |  | c-naiso |  | sch-032, sch-042 |  |  |
| sch-034 | 3.1.4 | 8F 内装 LGS下地・ボード張り | 内装 | area-2 | 8F | 2026-12-03 | 2026-12-11 | 2026-12-03 | 2026-12-11 | 6 | 0 | not_started |  | c-naiso |  | sch-033 |  |  |
| sch-035 | 3.1.5 | 5F クロス・床仕上げ | 内装 | area-2 | 5F | 2026-11-16 | 2026-11-24 | 2026-11-16 | 2026-11-24 | 4 | 0 | not_started |  | c-floor |  | sch-031, sch-039 |  |  |
| sch-036 | 3.1.6 | 6F クロス・床仕上げ | 内装 | area-2 | 6F | 2026-11-26 | 2026-12-04 | 2026-11-26 | 2026-12-04 | 4 | 0 | not_started |  | c-floor |  | sch-032 |  |  |
| sch-037 | 3.2.1 | 6F サッシ・ガラス取付 | 外装 | area-2 | 6F | 2026-10-05 | 2026-10-16 | 2026-10-05 | 2026-10-16 | 3 | 100 | done |  | c-sash |  |  |  |  |
| sch-038 | 3.2.2 | 5F・7-8F サッシ取付 | 外装 | area-2 | 5F・7-8F | 2026-10-19 | 2026-11-10 | 2026-10-19 | 2026-11-10 | 3 | 100 | done |  | c-sash |  | sch-037 |  |  |
| sch-039 | 3.2.3 | 5F ガラス取付 | 外装 | area-2 | 5F | 2026-11-11 | 2026-11-13 | 2026-11-11 | 2026-11-13 | 3 | 20 | in_progress |  | c-sash |  | sch-038 |  |  |
| sch-040 | 3.2.4 | 2工区 外壁シーリング・タッチアップ | 外装 | area-2 | 5-8F 外部 | 2026-11-12 | 2026-11-14 | 2026-11-12 | 2026-11-14 | 3 | 0 | not_started |  | c-tosou | True | sch-038 |  |  |
| sch-041 | 3.3.1 | 6F EPS 支持金物取付 | 電気 | area-2 | 6F | 2026-11-04 | 2026-11-10 | 2026-11-04 | 2026-11-10 | 2 | 100 | done |  | c-denki |  |  |  |  |
| sch-042 | 3.3.2 | 6-8F 幹線ケーブル入線 | 電気 | area-2 | 6-8F | 2026-10-29 | 2026-11-14 | 2026-10-29 | 2026-11-14 | 5 | 60 | in_progress |  | c-denki |  |  |  |  |
| sch-043 | 3.3.3 | 5-8F 空調ダクト・冷媒配管 | 空調 | area-2 | 5-8F | 2026-09-28 | 2026-11-06 | 2026-09-28 | 2026-11-06 | 4 | 100 | done |  | c-kucho |  |  |  |  |
| sch-044 | 3.3.4 | 5-8F 給排水配管 | 衛生 | area-2 | 5-8F | 2026-09-28 | 2026-11-04 | 2026-09-28 | 2026-11-04 | 3 | 100 | done |  | c-eisei |  |  |  |  |
| sch-045 | 3.4.1 | 6F スプリンクラーヘッド取付 | 防災 | area-2 | 6F | 2026-11-26 | 2026-11-30 | 2026-11-26 | 2026-11-30 | 2 | 0 | not_started |  | c-shobo |  | sch-032 |  |  |
| sch-046 | 4 | 3工区（9F〜12F・屋上） 仕上・設備 | 内装 | area-3 | 9F〜屋上 | 2026-09-07 | 2026-12-11 | 2026-09-07 | 2026-12-11 | 0 | 62 | in_progress | True |  |  |  |  |  |
| sch-047 | 4.1.1 | 9F 空調ダクト吊込み | 空調 | area-3 | 9F | 2026-10-26 | 2026-11-10 | 2026-10-26 | 2026-11-10 | 4 | 100 | done |  | c-kucho |  |  |  |  |
| sch-048 | 4.1.2 | 10F 空調ダクト吊込み | 空調 | area-3 | 10F | 2026-11-16 | 2026-11-20 | 2026-11-16 | 2026-11-20 | 4 | 0 | not_started |  | c-kucho |  | sch-047 |  | True |
| sch-049 | 4.1.3 | 11-12F 空調ダクト吊込み | 空調 | area-3 | 11-12F | 2026-11-30 | 2026-12-11 | 2026-11-30 | 2026-12-11 | 4 | 0 | not_started |  | c-kucho |  | sch-048 |  |  |
| sch-050 | 4.1.4 | 屋上 室外機架台据付 | 空調 | area-3 | 屋上 | 2026-11-10 | 2026-11-14 | 2026-11-10 | 2026-11-14 | 4 | 30 | in_progress |  | c-kucho | True |  |  |  |
| sch-051 | 4.1.5 | 屋上 室外機 揚重（クレーン） | 仮設 | area-3 | 屋上 | 2026-11-18 | 2026-11-18 | 2026-11-18 | 2026-11-18 | 3 | 0 | not_started |  | c-crane | True | sch-050 |  |  |
| sch-052 | 4.1.6 | 屋上 室外機据付・冷媒配管接続 | 空調 | area-3 | 屋上 | 2026-11-18 | 2026-11-25 | 2026-11-18 | 2026-11-25 | 5 | 0 | not_started |  | c-kucho | True | sch-051 |  |  |
| sch-053 | 4.2.1 | 屋上 防水 下地調整 | 外装 | area-3 | 屋上 | 2026-11-16 | 2026-11-19 | 2026-11-16 | 2026-11-19 | 4 | 0 | not_started |  | c-bousui | True | sch-050 |  |  |
| sch-054 | 4.2.2 | 屋上 防水 ウレタン塗膜防水 | 外装 | area-3 | 屋上 | 2026-11-20 | 2026-12-02 | 2026-11-20 | 2026-12-02 | 4 | 0 | not_started |  | c-bousui | True | sch-053 |  |  |
| sch-055 | 4.3.1 | 9-12F LGS下地 | 内装 | area-3 | 9-12F | 2026-09-07 | 2026-10-23 | 2026-09-07 | 2026-10-23 | 6 | 100 | done |  | c-naiso |  |  |  |  |
| sch-056 | 4.3.2 | 9-10F ボード張り | 内装 | area-3 | 9-10F | 2026-10-19 | 2026-11-06 | 2026-10-19 | 2026-11-06 | 5 | 100 | done |  | c-naiso |  | sch-055 |  |  |
| sch-057 | 4.3.3 | 11-12F ボード張り | 内装 | area-3 | 11-12F | 2026-12-03 | 2026-12-11 | 2026-12-03 | 2026-12-11 | 4 | 0 | not_started |  | c-naiso |  | sch-049 |  |  |
| sch-058 | 4.4.1 | 9-12F 照明・コンセント配線 | 電気 | area-3 | 9-12F | 2026-10-19 | 2026-11-06 | 2026-10-19 | 2026-11-06 | 4 | 100 | done |  | c-denki |  |  |  |  |
| sch-059 | 4.4.2 | 11-12F 自火報 感知器 取付 | 防災 | area-3 | 11-12F | 2026-12-07 | 2026-12-11 | 2026-12-07 | 2026-12-11 | 2 | 0 | not_started |  | c-shobo |  | sch-057 |  |  |
| sch-060 | 4.5.1 | EV 1号機 据付 | 昇降機 | area-3 | 昇降路・機械室 | 2026-09-14 | 2026-11-06 | 2026-09-14 | 2026-11-06 | 3 | 100 | done |  | c-ev |  |  |  |  |
| sch-061 | 4.5.2 | EV 1号機 調整・試運転 | 昇降機 | area-3 | 昇降路・機械室 | 2026-11-24 | 2026-12-04 | 2026-11-24 | 2026-12-04 | 2 | 0 | not_started |  | c-ev |  | sch-060, sch-024 |  |  |
| sch-062 | 4.5.3 | EV 2号機 据付 | 昇降機 | area-3 | 昇降路・機械室 | 2026-11-16 | 2026-12-11 | 2026-11-16 | 2026-12-11 | 3 | 0 | not_started |  | c-ev |  | sch-060, sch-024 |  |  |
| sch-063 | 5 | 外構 | 外構 | area-ext | 外構 | 2026-11-02 | 2026-12-11 | 2026-11-02 | 2026-12-11 | 0 | 37 | in_progress | True |  |  |  |  |  |
| sch-064 | 5.1.1 | 北側通路 舗装下地 | 外構 | area-ext | 北側通路 | 2026-11-04 | 2026-11-12 | 2026-11-04 | 2026-11-17 | 5 | 40 | delayed |  | c-gaiko | True |  |  |  |
| sch-065 | 5.1.2 | 北側通路 アスファルト舗装 | 外構 | area-ext | 北側通路 | 2026-11-24 | 2026-11-26 | 2026-11-24 | 2026-11-26 | 5 | 0 | not_started |  | c-gaiko | True | sch-064 |  |  |
| sch-066 | 5.2.1 | 南側駐輪場 路盤・ワイヤーメッシュ敷設 | 外構 | area-ext | 南側駐輪場 | 2026-11-02 | 2026-11-10 | 2026-11-02 | 2026-11-10 | 4 | 100 | done |  | c-gaiko | True |  |  |  |
| sch-067 | 5.2.2 | 南側駐輪場 土間コン 生コン打設（生コン車 延べ6台） | 外構 | area-ext | 南側駐輪場 | 2026-11-13 | 2026-11-13 | 2026-11-13 | 2026-11-13 | 2 | 0 | not_started |  | c-concrete | True | sch-066 |  |  |

| id | wbs | name | category | areaId | floor | baselineStart | baselineEnd | start | end | workers | progress | status | summary | companyId | outdoor | dependsOn |
| --- | --- | --- | --- | --- | --- | --- | --- | --- | --- | --- | --- | --- | --- | --- | --- | --- |
| sch-068 | 5.2.3 | 南側駐輪場 土間コン打設・金ゴテ仕上げ | 外構 | area-ext | 南側駐輪場 | 2026-11-13 | 2026-11-13 | 2026-11-13 | 2026-11-13 | 4 | 0 | not_started |  | c-gaiko | True | sch-066 |
| sch-069 | 5.3.1 | 外構 縁石・植栽 | 外構 | area-ext | 敷地外周 | 2026-12-01 | 2026-12-11 | 2026-12-01 | 2026-12-11 | 4 | 0 | not_started |  | c-gaiko | True | sch-065 |
| sch-070 | 6 | 検査 | 検査 | area-ext | 全体 | 2026-11-16 | 2026-12-09 | 2026-11-16 | 2026-12-09 | 0 | 0 | not_started | True |  |  |  |
| sch-071 | 6.1 | 1工区 社内検査 | 検査 | area-1 | B1F〜4F | 2026-11-16 | 2026-11-17 | 2026-11-16 | 2026-11-17 | 2 | 0 | not_started |  | c-gc |  | sch-009, sch-015, sch-020 |
| sch-072 | 6.2 | 1工区 施主検査 | 検査 | area-1 | B1F〜4F | 2026-11-19 | 2026-11-19 | 2026-11-19 | 2026-11-19 | 3 | 0 | not_started |  | c-gc |  | sch-071 |
| sch-073 | 6.3 | 2工区 設計監理者検査 | 検査 | area-2 | 5F〜8F | 2026-12-07 | 2026-12-09 | 2026-12-07 | 2026-12-09 | 2 | 0 | not_started |  | c-gc |  | sch-035, sch-036 |
| sch-074 | 7 | 躯体 | 躯体 | area-3 | 全体 | 2026-08-03 | 2026-08-28 | 2026-08-03 | 2026-08-28 | 0 | 100 | done | True |  |  |  |
| sch-075 | 7.1 | 塔屋 RC 配筋 | 躯体 | area-3 | 塔屋 | 2026-08-03 | 2026-08-21 | 2026-08-03 | 2026-08-21 | 5 | 100 | done |  | c-tekkin | True |  |
| sch-076 | 7.2 | 塔屋 RC 型枠 | 躯体 | area-3 | 塔屋 | 2026-08-10 | 2026-08-28 | 2026-08-10 | 2026-08-28 | 5 | 100 | done |  | c-katawaku | True | sch-075 |
